# Projeto Institucional V1.0

Schedule from MS Project, 2025-01-01 to 2025-01-15.

## Calendars

- Padrão: Mon-Fri 07:30-11:30, 12:30-16:00; Sat-Sun off. Exceptions (off unless hours are given): 2025-01-11 to 2025-01-12 (Recesso Empresarial ( Folga )).

## Schedule

| ID | WBS | Task | Type | Duration | Start | Finish | Total slack |
| --- | --- | --- | --- | --- | --- | --- | --- |
| 1 | 1 | **Início do Projeto** |  | 10d? | 2025-01-01 | 2025-01-15 | 0d |
| 2 | 1.1 | Etapa 1 - Criação |  | 1d? | 2025-01-01 | 2025-01-02 | 0d |
| 3 | 1.2 | Fazer Brainstorm de criação |  | 4h | 2025-01-01 | 2025-01-01 | 0d |
| 4 | 1.3 | Criar Roteiro |  | 10d | 2025-01-01 | 2025-01-15 | 0d |
| 5 | 1.4 | Criar Storyboard |  | 2d | 2025-01-01 | 2025-01-03 | 0d |
| 6 | 1.5 | Término Etapa 1 | milestone | 0d | 2025-01-01 | 2025-01-01 | 0d |
| 7 | 2 | **Etapa 2 - Planejamento** |  | 10d | 2025-01-01 | 2025-01-15 | 0d |
| 8 | 2.1 | Selecionar Casting |  | 5d | 2025-01-01 | 2025-01-08 | 0d |
| 9 | 2.2 | Selecionar Locações de Filmagem |  | 10d | 2025-01-01 | 2025-01-15 | 0d |
| 10 | 2.3 | Definir Equipamentos de Filmagem |  | 1d | 2025-01-01 | 2025-01-02 | 0d |
| 11 | 2.4 | Definir Equipe de Filmagem |  | 1d | 2025-01-01 | 2025-01-02 | 0d |
| 12 | 2.5 | Definir Equipamentos de Audio |  | 1d | 2025-01-01 | 2025-01-02 | 0d |
| 13 | 2.6 | Definir Equipe de Audio |  | 1d | 2025-01-01 | 2025-01-02 | 0d |
| 14 | 2.7 | Definir Equipamentos de Iluminação |  | 1d | 2025-01-01 | 2025-01-02 | 0d |
| 15 | 2.8 | Definir Equipe de Iluminação |  | 1d | 2025-01-01 | 2025-01-02 | 0d |
| 16 | 2.9 | Planejar Produção e Operação |  | 2.5d | 2025-01-01 | 2025-01-03 | 0d |
| 17 | 2.10 | Planejar Montagem de Cenários |  | 2d | 2025-01-01 | 2025-01-03 | 0d |
| 18 | 2.11 | Planejar Figurino |  | 1d | 2025-01-01 | 2025-01-02 | 0d |
| 19 | 2.12 | Planejar Deslocamento das Equipes |  | 0.5d | 2025-01-01 | 2025-01-01 | 0d |
| 20 | 2.13 | Definir Cronograma de Filmagens |  | 2d | 2025-01-01 | 2025-01-03 | 0d |
| 21 | 2.14 | Definir Cronograma de Edição |  | 2d | 2025-01-01 | 2025-01-03 | 0d |
| 22 | 2.15 | Criar Orçamento e Planejamento Financeiro |  | 2d | 2025-01-01 | 2025-01-03 | 0d |
| 23 | 2.16 | Término Etapa 2 | milestone | 0d | 2025-01-01 | 2025-01-01 | 0d |
| 24 | 3 | **Etapa 3 - Execução** |  | 2d | 2025-01-01 | 2025-01-03 | 0d |
| 25 | 3.1 | Contratar Serviços e Equipes |  | 2d | 2025-01-01 | 2025-01-03 | 0d |
| 26 | 3.2 | Realizar Ajustes do Local |  | 1d | 2025-01-01 | 2025-01-02 | 0d |
| 27 | 3.3 | Montar Cenário |  | 1d | 2025-01-01 | 2025-01-02 | 0d |
| 28 | 3.4 | Montar Equipamentos de Filmagem |  | 4h | 2025-01-01 | 2025-01-01 | 0d |
| 29 | 3.5 | Montar Equipamentos de Audio |  | 4h | 2025-01-01 | 2025-01-01 | 0d |
| 30 | 3.6 | Montar Equipamentos de Iluminação |  | 4h | 2025-01-01 | 2025-01-01 | 0d |
| 31 | 3.7 | Testar Equipamentos |  | 4h | 2025-01-01 | 2025-01-01 | 0d |
| 32 | 3.8 | Realizar Ensaios |  | 1d | 2025-01-01 | 2025-01-02 | 0d |
| 33 | 3.9 | Realizar Filmagens |  | 1d | 2025-01-01 | 2025-01-02 | 0d |
| 34 | 3.10 | Desmontar Local |  | 0.5d | 2025-01-01 | 2025-01-01 | 0d |
| 35 | 3.11 | Limpar Local |  | 0.5d | 2025-01-01 | 2025-01-01 | 0d |
| 36 | 3.12 | Término Etapa 3 | milestone | 0d | 2025-01-01 | 2025-01-01 | 0d |

| ID | WBS | Task | Type | Duration | Start | Finish | Total slack |
| --- | --- | --- | --- | --- | --- | --- | --- |
| 37 | 4 | **Etapa 4 - Pós Produção** |  | 5d | 2025-01-01 | 2025-01-08 | 0d |
| 38 | 4.1 | Decupar Material |  | 1d | 2025-01-01 | 2025-01-02 | 0d |
| 39 | 4.2 | Editar Vídeo |  | 3d | 2025-01-01 | 2025-01-06 | 0d |
| 40 | 4.3 | Inserir Efeitos Especiais |  | 5d | 2025-01-01 | 2025-01-08 | 0d |
| 41 | 4.4 | Realizar Tratamento e Correções |  | 2d | 2025-01-01 | 2025-01-03 | 0d |
| 42 | 4.5 | Renderizar |  | 4h | 2025-01-01 | 2025-01-01 | 0d |
| 43 | 4.6 | Entrega do Vídeo | milestone | 0d | 2025-01-01 | 2025-01-01 | 0d |
| 44 | 4.7 | Término do Projeto | milestone | 0d | 2025-01-01 | 2025-01-01 | 0d |
